# MigrationQualité

Schedule from GanttProject, 2020-06-29 to 2021-02-10.
Holidays every year on 01-01, 07-01, 12-25, 12-26

## Calendars

- Project calendar: Mon-Fri working; Sat-Sun off.

## Resources

| Resource |
| --- |
| Pascale |
| Geoffroy |
| Amanda |
| Nicolas |

## Schedule

| ID | WBS | Task | Duration | Start | Finish | Predecessors | Complete | Resources |
| --- | --- | --- | --- | --- | --- | --- | --- | --- |
| 1 | 1 | **Phase#1- Read Access** | 126d | 2020-08-17 | 2021-02-10 |  | 5% |  |
| 2 | 1.1 | CGP-Data quality needs | 14d | 2020-08-25 | 2020-09-11 |  |  | Amanda |
| 3 | 1.2 | New data quality conceptual model definition | 20d | 2020-08-17 | 2020-09-11 |  |  |  |
| 4 | 1.3 | New data quality relational DB model definition | 11d | 2020-09-14 | 2020-09-28 | 3 |  | Pascale |
| 5 | 1.4 | New data quality relational DB model implementation | 5d | 2020-09-29 | 2020-10-05 | 4 |  |  |
| 6 | 1.5 | Old DQ records migration- Analysis | 15d | 2020-08-17 | 2020-09-04 |  | 90% | Amanda |
| 7 | 1.6 | Old DQ records migration- minimal content | 20d | 2020-10-06 | 2020-11-02 | 4, 5, 6 |  | Pascale; Nicolas [10%] |
| 8 | 1.7 | Old DQ records migration- full content | 45d | 2020-11-03 | 2021-01-06 | 7 |  |  |
| 9 | 1.8 | Transaction model definition | 20d | 2020-09-21 | 2020-10-16 |  |  |  |
| 10 | 1.9 | SOW-Creation | 25d | 2020-09-14 | 2020-10-16 |  |  | Geoffroy; Nicolas |
| 11 | 1.10 | API developpement (Contract) | 45d | 2020-11-09 | 2021-01-12 | 10FS+15d |  | Geoffroy [10%] |
| 12 | 1.11 | Test and PreProd | 20d | 2021-01-13 | 2021-02-09 |  |  |  |
| 13 | 1.12 | Deployment | 1d | 2021-02-10 | 2021-02-10 | 12 |  |  |
| 14 | 2 | SQL_Training | 13d | 2020-09-02 | 2020-09-18 |  |  | Pascale; Amanda |
| 15 | 3 | OpenAPI learning and training | 46d | 2020-06-29 | 2020-09-01 |  |  | Pascale; Geoffroy |

Notes:
- 7: Without automation
